# Office Remodel Run Lui B

Schedule from MS Project, 2019-01-28 to 2019-03-14, costs in $.
P8 LLC

## Calendars

- Standard: Mon-Fri 08:00-12:00, 13:00-17:00; Sat-Sun off.
- Evening Drywall Install: Mon-Fri 16:00-24:00; Sat-Sun off.

## Resources

| Resource | Unit | Rate |
| --- | --- | --- |
| Toby Nixon |  | 30 |
| Lori Kane |  | 30 |
| Run Liu |  | 20 |
| electrician |  | 60 |
| plumber |  | 60 |
| drywall | sheet | 11 |
| drywall screws | 1 pound | 7 |
| John Emory |  | 35 |
| scaffolding |  | 9.38 |
| table saw |  | 10 |
| nails |  |  |
| painter |  |  |

## Schedule

| ID | WBS | Task | Duration | Start | Finish | Predecessors | Total slack | Free slack | Deadline | Calendar | Resources | Work | Cost |
| --- | --- | --- | --- | --- | --- | --- | --- | --- | --- | --- | --- | --- | --- |
| 1 | 1 | **Prep** | 0.5d | 2019-01-28 | 2019-01-28 |  | 1.5d | 0d |  |  |  | 12h | 680 |
| 2 | 1.1 | Remove existing furniture | 0.5d | 2019-01-28 | 2019-01-28 |  | 1.5d | 0d |  |  | Run Liu [0.1%] |  | 80 |
| 3 | 1.2 | Remove existing appliances | 0.5d | 2019-01-28 | 2019-01-28 |  | 1.5d | 0d |  |  | electrician; Lori Kane; plumber | 12h | 600 |
| 4 | 2 | **Demolition** | 5d | 2019-01-28 | 2019-02-04 |  | 1.5d | 0d |  |  |  | 80h | 2,600 |
| 5 | 2.1 | Remove existing ceiling | 1d | 2019-01-28 | 2019-01-29 | 2, 3 | 1.5d | 0d |  |  | Toby Nixon; John Emory | 16h | 520 |
| 6 | 2.2 | Tear out inside dividing walls | 2d | 2019-01-29 | 2019-01-31 | 5 | 1.5d | 0d |  |  | John Emory; Toby Nixon | 32h | 1,040 |
| 7 | 2.3 | Remove drywall from main walls | 2d | 2019-01-31 | 2019-02-04 | 6 | 1.5d | 0d | 2019-02-05 |  | John Emory; Toby Nixon | 32h | 1,040 |
| 8 | 3 | **Construction** | 12.5d | 2019-02-04 | 2019-02-20 |  | 2d | 0d |  |  |  | 146h | 6,310 |
| 9 | 3.1 | Install interior stud walls | 3d | 2019-02-04 | 2019-02-07 | 7 | 2.38d | 0d |  |  | John Emory; Toby Nixon | 48h | 1,560 |
| 10 | 3.2 | Re-run electrical in all stud walls | 1d | 2019-02-07 | 2019-02-08 | 9 | 2.38d | 0d |  |  | electrician | 8h | 480 |
| 11 | 3.3 | Re-run plumbing for sink and icemaker | 1d | 2019-02-07 | 2019-02-08 | 9 | 2.38d | 0d |  |  | plumber | 8h | 480 |
| 12 | 3.4 | Install drywall | 5d | 2019-02-08 | 2019-02-15 | 10, 11 | 1d | 0d |  | Evening Drywall Install | drywall [50 sheet]; nails [5%]; John Emory; Toby Nixon | 82h | 3,150 |
| 13 | 3.5 | Install ceiling grid | 3d | 2019-02-15 | 2019-02-19 | 12 | 2d | 0d |  |  | Run Liu [0.1%] |  | 480 |
| 14 | 3.6 | Install ceiling tile | 1d | 2019-02-20 | 2019-02-20 | 13 | 2d | 0d | 2019-02-22 |  | Run Liu [0.1%] |  | 160 |
| 15 | 4 | **Finishing Work** | 13.5d | 2019-02-25 | 2019-03-14 |  | 0d |  |  |  |  | 148h | 5,520 |
| 16 | 4.1 | Paint walls and woodwork | 8d | 2019-02-25 | 2019-03-06 | 14 | 0d |  |  |  | Toby Nixon [50%]; Lori Kane [50%]; painter [50%]; Run Liu [0.1%] | 96h | 3,200 |
| 17 | 4.2 | Install new floor tile | 3d | 2019-03-07 | 2019-03-11 | 16 | 0d |  |  |  | John Emory | 24h | 840 |
| 18 | 4.3 | Re-install appliances | 1d | 2019-03-12 | 2019-03-12 | 17 | 0d |  |  |  | electrician; plumber; Run Liu [0.1%] | 16h | 1,120 |
| 19 | 4.4 | Final cleaning | 1d | 2019-03-13 | 2019-03-13 | 18 | 0d |  |  |  | Lori Kane | 8h | 240 |
| 20 | 4.5 | Re-install furniture | 0.5d | 2019-03-14 | 2019-03-14 | 19 | 0d |  |  |  | Lori Kane | 4h | 120 |
