# Tailspin Remote Drone Revised Deadlines

Schedule from MS Project, 2019-01-07 to 2019-05-23, costs in $.

## Calendars

- Standard: Mon-Fri 08:00-12:00, 13:00-17:00; Sat-Sun off. Exceptions (off unless hours are given): 2019-01-21 to 2021-01-18 (Martin Luther King Jr. Day , recurring).
- Survey Calendar: Mon-Sat 10:00-14:00, 15:00-19:00; Sun off. Exceptions (off unless hours are given): 2019-01-21 to 2021-01-18 (Martin Luther King Jr. Day , recurring).

## Resources

| Resource | Group | Unit | Rate | Cost per use | Notes |
| --- | --- | --- | --- | --- | --- |
| Jamie Reding | Engineering |  | 37.5 |  | Jamie on vacation Jan 14 and 15; available for consult at home if necessary |
| Scott Seely | Marketing |  | 22.5 |  |  |
| Jeff Pike | Marketing |  | 25 |  |  |
| Judy Lew | Management |  | 29.5 |  |  |
| Brenda Diaz | Admininstrative |  | 19.75 |  |  |
| Brad Sutton | Marketing |  | 16.5 |  |  |
| Annette Hill | Administrative |  | 20 |  |  |
| Ryan Ihrig | Marketing |  | 16 |  |  |
| Yan Li |  |  | 28.5 |  |  |
| Model technician | Manufacturing |  | 16.5 |  |  |
| Digital camera | Equipment |  | 7.5 | 20 |  |
| Anemometer | Equipment |  | 0.5 |  |  |
| Safety tether | Equipment |  | 0.12 |  |  |
| Clipboards | Supplies |  |  |  |  |
| Large Conference Room | Facilities |  |  |  |  |
| Small Conference Room | Facilities |  |  |  |  |
| SD Card | Equipment | 4 GB | 12 |  |  |
| Printer paper | Supplies | Ream | 4 |  |  |
| Travel | Cost |  |  |  |  |
| Food | Cost |  |  |  |  |
| Bottled water | Supplies | case | 5 |  |  |
| Pens | Supplies | 12 count box | 3 |  |  |
| Survey Team Member | Marketing |  | 15 |  |  |
| Shu Ito | HR |  | 35 |  |  |
| Maria Hammond | Quality |  | 27.5 |  |  |
| Jim Kim | Quality |  | 28 |  |  |
| Bjorn Rettig | Engineering |  | 35 |  |  |
| Florian Voss | PMO |  | 37.5 |  |  |
| Jane Clayton | Manufacturing |  | 42.5 |  |  |
| Greg Guzik | Manufacturing |  | 32 |  |  |
| David Barber | Engineering |  | 43.75 |  |  |
| Eva Corets | Administrative |  | 15 |  |  |
| Frank Zhang | Management |  | 50 |  |  |
| Testing Field | Facilities |  |  |  |  |

## Schedule

| ID | WBS | Task | Type | Duration | Start | Finish | Predecessors | Total slack | Free slack | Constraint | Deadline | Calendar | Resources | Work | Cost |
| --- | --- | --- | --- | --- | --- | --- | --- | --- | --- | --- | --- | --- | --- | --- | --- |
| 1 | 1 | **Target Market Research and Analysis** |  | 29.62d | 2019-01-07 08:00 | 2019-02-18 14:00 |  | 0.01d | 0d |  |  |  |  | 745.57h | 20,756.29 |
| 2 | 1.1 | **Research** |  | 29.62d | 2019-01-07 08:00 | 2019-02-18 14:00 |  | 0.01d | 0d |  |  |  |  | 485.57h | 13,818.54 |
| 3 | 1.1.1 | Research begins | milestone | 0d | 2019-01-07 08:00 | 2019-01-07 08:00 |  | 0.01d | 0d |  |  |  |  |  |  |
| 4 | 1.1.2 | **Surveys** |  | 7d | 2019-01-07 08:00 | 2019-01-15 18:59 |  | 0.01d | 0d |  |  |  |  | 149.57h | 3,249.79 |
| 5 | 1.1.2.1 | Develop survey questionnaire |  | 2.24d | 2019-01-07 08:00 | 2019-01-09 07:56 | 3 | 0.01d | 0d |  |  |  | Scott Seely; Jeff Pike; Annette Hill [50%]; Brad Sutton | 56h | 1,184 |
| 6 | 1.1.2.2 | Review and approval of survey |  | 1h | 2019-01-09 08:00 | 2019-01-09 09:00 | 5 | 0d |  |  |  |  | Jeff Pike | 1h | 25 |
| 7 | 1.1.2.3 | Conduct survey |  | 1.2w | 2019-01-09 10:00 | 2019-01-15 18:59 | 6 | 108d | 0d |  |  | Survey Calendar | Judy Lew [50%]; Scott Seely [57.1%]; Annette Hill [28.6%]; Ryan Ihrig [57.1%]; Bottled water [0.5 case] | 92.57h | 2,040.79 |
| 8 | 1.1.3 | **Focus Groups** |  | 11.88d | 2019-01-09 09:00 | 2019-01-25 17:00 |  | 0d |  |  |  |  |  | 146h | 3,367.5 |
| 9 | 1.1.3.1 | Identify focus group member demographics |  | 1d | 2019-01-09 09:00 | 2019-01-10 09:00 | 6 | 0d |  |  | 2019-01-10 17:00 |  | Jeff Pike; Yan Li; Brenda Diaz | 24h | 586 |
| 10 | 1.1.3.2 | Contact potential focus group members |  | 5.12d | 2019-01-10 09:00 | 2019-01-17 10:00 | 9 | 0d |  |  |  |  | Survey Team Member; Brad Sutton | 82h | 1,291.5 |
| 11 | 1.1.3.3 | Conduct focus groups |  | 1w | 2019-01-14 08:00 | 2019-01-25 17:00 | 10 | 0d |  | start no later than 2019-01-14 08:00 |  |  | Food [0.1%]; Judy Lew [50%]; Annette Hill [50%] | 40h | 1,490 |
| 12 | 1.1.4 | **Observations** |  | 15.62d | 2019-01-28 08:00 | 2019-02-18 14:00 |  | 0.75d | 0d |  |  |  |  | 190h | 7,201.25 |
| 13 | 1.1.4.1 | Identify observation parameters |  | 4h | 2019-01-28 08:00 | 2019-01-28 12:00 | 11 | 0.75d | 0d |  |  |  | Brenda Diaz; Brad Sutton | 8h | 145 |
| 14 | 1.1.4.2 | Select observation locations |  | 1h | 2019-01-28 13:00 | 2019-01-28 14:00 | 13 | 0.75d | 0d |  |  |  | Brad Sutton; Brenda Diaz | 2h | 36.25 |
| 15 | 1.1.4.3 | Conduct observations |  | 3w | 2019-01-28 14:00 | 2019-02-18 14:00 | 14 | 0.75d | 0d |  |  |  | Food [0.1%]; Jamie Reding [50%]; Jeff Pike [50%]; Judy Lew [50%]; Travel [0.1%] | 180h | 7,020 |
| 16 | 1.1.5 | Research complete | milestone | 0d | 2019-02-18 14:00 | 2019-02-18 14:00 | 15 | 67.55d | 0d |  |  |  |  |  |  |
| 17 | 1.2 | **Analysis** |  | 14d | 2019-01-28 14:00 | 2019-02-15 14:00 |  | 0.75d | 0d |  |  |  |  | 260h | 6,937.75 |
| 18 | 1.2.1 | Analysis begins | milestone | 0d | 2019-01-28 14:00 | 2019-01-28 14:00 | 15SS | 0.75d | 0d |  |  |  |  |  |  |
| 19 | 1.2.2 | **Analysis of Research Data** |  | 8d | 2019-01-28 14:00 | 2019-02-07 14:00 |  | 0.75d | 0d |  |  |  |  | 170h | 4,520.75 |
| 20 | 1.2.2.1 | Analyze surveys, focus groups, and observations |  | 2.12d | 2019-01-28 14:00 | 2019-01-30 12:00 | 18 | 0.88d | 0d |  |  |  | Jamie Reding; David Barber; Scott Seely; Ryan Ihrig | 60h | 1,796.25 |
| 21 | 1.2.2.2 | Create follow up actions for secondary research |  | 1d | 2019-01-30 13:00 | 2019-01-31 12:00 | 20 | 0.75d | 0d |  |  |  | Annette Hill [50%]; Brenda Diaz; Brad Sutton; Eva Corets | 28h | 490 |
| 22 | 1.2.2.3 | Conduct secondary research |  | 1.02w | 2019-01-31 13:00 | 2019-02-07 14:00 | 21 | 0.75d | 0d |  |  |  | Jeff Pike; Judy Lew | 82h | 2,234.5 |
| 23 | 1.2.3 | **Report of Research Findings** |  | 7d | 2019-02-06 14:00 | 2019-02-15 14:00 |  | 0.75d | 0d |  |  |  |  | 90h | 2,417 |
| 24 | 1.2.3.1 | Compile draft copy of report |  | 8h | 2019-02-06 14:00 | 2019-02-07 14:00 | 22FF | 0.75d | 0d |  |  |  | Brenda Diaz | 8h | 158 |
| 25 | 1.2.3.2 | Draft copy review period |  | 5d | 2019-02-07 14:00 | 2019-02-14 14:00 | 24 | 0.75d | 0d |  |  |  | Bjorn Rettig [50%]; Brad Sutton [75%] | 50h | 1,195 |
| 26 | 1.2.3.3 | Review comments and compile final report |  | 1d | 2019-02-14 14:00 | 2019-02-15 14:00 | 25 | 0.75d | 0d |  |  |  | Brenda Diaz; David Barber; Jamie Reding; Greg Guzik | 32h | 1,064 |
| 27 | 1.2.4 | Analysis complete | milestone | 0d | 2019-02-15 14:00 | 2019-02-15 14:00 | 26 | 0.75d | 0d |  | 2019-02-22 17:00 |  |  |  |  |

Notes:
- 7: Contact Mark Hanson in Marketing for additional resource support.

| ID | WBS | Task | Type | Duration | Start | Finish | Predecessors | Total slack | Free slack | Constraint | Deadline | Resources | Work | Cost |
| --- | --- | --- | --- | --- | --- | --- | --- | --- | --- | --- | --- | --- | --- | --- |
| 28 | 2 | **Design** |  | 14.5d | 2019-02-15 14:00 | 2019-03-08 09:00 |  | 0.75d | 0d |  | 2019-03-08 17:00 |  | 422h | 10,067.38 |
| 29 | 2.1 | Design begins | milestone | 0d | 2019-02-15 14:00 | 2019-02-15 14:00 | 27 | 0.75d | 0d |  |  |  |  |  |
| 30 | 2.2 | Research Findings Evaluation |  | 2d | 2019-02-15 14:00 | 2019-02-19 16:00 | 29 | 0.75d | 0d |  |  | Jamie Reding; Judy Lew; Maria Hammond; David Barber | 64h | 2,212 |
| 31 | 2.3 | Design Document |  | 2d | 2019-02-19 16:00 | 2019-02-21 16:00 | 30 | 0.75d | 0d |  |  | Jamie Reding; Brenda Diaz | 32h | 916 |
| 32 | 2.4 | Proof of Concept |  | 2w | 2019-02-21 16:00 | 2019-03-07 16:00 | 31 | 0.75d | 0d |  |  | Model technician; Maria Hammond; Greg Guzik; SD Card [0.03 4 GB]; Digital camera | 320h | 6,700.38 |
| 33 | 2.5 | Final Design Selection |  | 2h | 2019-03-07 16:00 | 2019-03-08 09:00 | 32 | 0.75d | 0d |  |  | Frank Zhang; Greg Guzik; Jamie Reding | 6h | 239 |
| 34 | 2.6 | Design complete | milestone | 0d | 2019-03-08 09:00 | 2019-03-08 09:00 | 33 | 0.75d | 0d |  |  |  |  |  |
| 35 | 3 | **Product Development** |  | 27.25d | 2019-03-08 09:00 | 2019-04-16 11:00 |  | 0d |  |  |  |  | 930h | 19,525 |
| 36 | 3.1 | Product development begins | milestone | 0d | 2019-03-08 09:00 | 2019-03-08 09:00 | 34 | 0.75d | 0d |  |  |  |  |  |
| 37 | 3.2 | Initial Prototype |  | 1.02w | 2019-03-08 09:00 | 2019-03-15 10:00 | 36 | 0.75d | 0d |  |  | Model technician [200%]; Jamie Reding; Jane Clayton | 164h | 4,633 |
| 38 | 3.3 | Internal Testing |  | 2w | 2019-03-18 08:00 | 2019-03-29 17:00 | 37 | 0d |  | start no earlier than 2019-03-18 08:00 |  | Maria Hammond; Jim Kim; Model technician; Jamie Reding [25%]; Testing Field; SD Card [1 4 GB]; Digital camera | 420h | 7,142 |
| 39 | 3.4 | Raw Materials List |  | 9h | 2019-04-01 08:00 | 2019-04-02 09:00 | 38 | 0d |  |  |  | Jamie Reding; Eva Corets | 18h | 472.5 |
| 40 | 3.5 | Parts Designation |  | 2.05w | 2019-04-02 09:00 | 2019-04-16 11:00 | 39 | 0d |  |  |  | Eva Corets; Jamie Reding; Brad Sutton; Brenda Diaz | 328h | 7,277.5 |
| 41 | 3.6 | Product development complete | milestone | 0d | 2019-04-16 11:00 | 2019-04-16 11:00 | 40 | 0d |  |  | 2019-04-19 17:00 |  |  |  |
| 42 | 4 | **Production Planning** |  | 9.38d | 2019-04-16 11:00 | 2019-04-29 15:00 |  | 0d |  |  |  |  | 386h | 11,130 |
| 43 | 4.1 | Production planning begins | milestone | 0d | 2019-04-16 11:00 | 2019-04-16 11:00 | 41 | 0d |  |  |  |  |  |  |
| 44 | 4.2 | High-level Production Plan |  | 5.12d | 2019-04-16 11:00 | 2019-04-23 12:00 | 43 | 0d |  |  |  | Bjorn Rettig; Eva Corets; Frank Zhang; Jane Clayton; Large Conference Room; Model technician | 246h | 6,519 |
| 45 | 4.3 | Resource Planning |  | 3d | 2019-04-23 13:00 | 2019-04-26 12:00 | 44 | 0d |  |  |  | Judy Lew; Frank Zhang; Jamie Reding; Eva Corets; Bjorn Rettig | 120h | 4,008 |
| 46 | 4.4 | Quality Control Design |  | 1d | 2019-04-26 13:00 | 2019-04-29 12:00 | 45 | 0d |  |  |  | Maria Hammond; Jim Kim | 16h | 444 |
| 47 | 4.5 | Final Production Plan Approval |  | 2h | 2019-04-29 13:00 | 2019-04-29 15:00 | 46 | 0d |  |  |  | Judy Lew; Frank Zhang | 4h | 159 |
| 48 | 4.6 | Production planning complete | milestone | 0d | 2019-04-29 15:00 | 2019-04-29 15:00 | 47 | 0d |  |  | 2019-04-30 17:00 |  |  |  |
| 49 | 5 | **Marketing** |  | 17.43d | 2019-04-29 15:00 | 2019-05-23 09:24 |  | 0d |  |  |  |  | 664.2h | 14,264.75 |
| 50 | 5.1 | Marketing phase begins | milestone | 0d | 2019-04-29 15:00 | 2019-04-29 15:00 | 48 | 0d |  |  |  |  |  |  |
| 51 | 5.2 | Marketing Strategy Development |  | 1.18d | 2019-04-29 15:00 | 2019-04-30 15:24 | 50 | 0d |  |  |  | Scott Seely; Brad Sutton; Brenda Diaz | 25.2h | 493.5 |
| 52 | 5.3 | Marketing Plan Development and Approval |  | 1d | 2019-04-30 15:24 | 2019-05-01 15:24 | 51 | 0d |  |  |  | Frank Zhang; Judy Lew; Ryan Ihrig | 24h | 764 |
| 53 | 5.4 | Marketing Materials |  | 3.08w | 2019-05-01 15:24 | 2019-05-23 09:24 | 52 | 0d |  |  |  | Jeff Pike; Brenda Diaz; Brad Sutton; Ryan Ihrig; Yan Li | 615h | 13,007.25 |
| 54 | 5.5 | Marketing phase complete | milestone | 0d | 2019-05-23 09:24 | 2019-05-23 09:24 | 53 | 0d |  |  | 2019-05-28 17:00 |  |  |  |

| ID | WBS | Task | Duration | Start | Finish | Total slack | Free slack | Constraint | Resources | Work | Cost |
| --- | --- | --- | --- | --- | --- | --- | --- | --- | --- | --- | --- |
| 55 | 6 | **Project Management** | 94.12d | 2019-01-07 08:00 | 2019-05-20 09:00 | 3.05d | 0d |  |  | 100h | 2,820 |
| 56 | 6.1 | **Status Meeting** | 94.12d | 2019-01-07 08:00 | 2019-05-20 09:00 | 3.05d | 0d |  |  | 100h | 2,820 |
| 57 | 6.1.1 | Status Meeting 1 | 1h | 2019-01-07 08:00 | 2019-01-07 09:00 | 97.05d | 0d | start no earlier than 2019-01-07 08:00 | Brad Sutton; Eva Corets; Jane Clayton; Judy Lew; Florian Voss | 5h | 141 |
| 58 | 6.1.2 | Status Meeting 2 | 1h | 2019-01-14 08:00 | 2019-01-14 09:00 | 92.05d | 0d | start no earlier than 2019-01-14 08:00 | Brad Sutton; Eva Corets; Jane Clayton; Judy Lew; Florian Voss | 5h | 141 |
| 59 | 6.1.3 | Status Meeting 3 | 1h | 2019-01-22 08:00 | 2019-01-22 09:00 | 87.05d | 0d | start no earlier than 2019-01-21 08:00 | Brad Sutton; Eva Corets; Jane Clayton; Judy Lew; Florian Voss | 5h | 141 |
| 60 | 6.1.4 | Status Meeting 4 | 1h | 2019-01-28 08:00 | 2019-01-28 09:00 | 83.05d | 0d | start no earlier than 2019-01-28 08:00 | Brad Sutton; Eva Corets; Jane Clayton; Judy Lew; Florian Voss | 5h | 141 |
| 61 | 6.1.5 | Status Meeting 5 | 1h | 2019-02-04 08:00 | 2019-02-04 09:00 | 78.05d | 0d | start no earlier than 2019-02-04 08:00 | Brad Sutton; Eva Corets; Jane Clayton; Judy Lew; Florian Voss | 5h | 141 |
| 62 | 6.1.6 | Status Meeting 6 | 1h | 2019-02-11 08:00 | 2019-02-11 09:00 | 73.05d | 0d | start no earlier than 2019-02-11 08:00 | Brad Sutton; Eva Corets; Jane Clayton; Judy Lew; Florian Voss | 5h | 141 |
| 63 | 6.1.7 | Status Meeting 7 | 1h | 2019-02-18 08:00 | 2019-02-18 09:00 | 68.05d | 0d | start no earlier than 2019-02-18 08:00 | Brad Sutton; Eva Corets; Jane Clayton; Judy Lew; Florian Voss | 5h | 141 |
| 64 | 6.1.8 | Status Meeting 8 | 1h | 2019-02-25 08:00 | 2019-02-25 09:00 | 63.05d | 0d | start no earlier than 2019-02-25 08:00 | Brad Sutton; Eva Corets; Jane Clayton; Judy Lew; Florian Voss | 5h | 141 |
| 65 | 6.1.9 | Status Meeting 9 | 1h | 2019-03-04 08:00 | 2019-03-04 09:00 | 58.05d | 0d | start no earlier than 2019-03-04 08:00 | Brad Sutton; Eva Corets; Jane Clayton; Judy Lew; Florian Voss | 5h | 141 |
| 66 | 6.1.10 | Status Meeting 10 | 1h | 2019-03-11 08:00 | 2019-03-11 09:00 | 53.05d | 0d | start no earlier than 2019-03-11 08:00 | Brad Sutton; Eva Corets; Jane Clayton; Judy Lew; Florian Voss | 5h | 141 |
| 67 | 6.1.11 | Status Meeting 11 | 1h | 2019-03-18 08:00 | 2019-03-18 09:00 | 48.05d | 0d | start no earlier than 2019-03-18 08:00 | Brad Sutton; Eva Corets; Jane Clayton; Judy Lew; Florian Voss | 5h | 141 |
| 68 | 6.1.12 | Status Meeting 12 | 1h | 2019-03-25 08:00 | 2019-03-25 09:00 | 43.05d | 0d | start no earlier than 2019-03-25 08:00 | Brad Sutton; Eva Corets; Jane Clayton; Judy Lew; Florian Voss | 5h | 141 |
| 69 | 6.1.13 | Status Meeting 13 | 1h | 2019-04-01 08:00 | 2019-04-01 09:00 | 38.05d | 0d | start no earlier than 2019-04-01 08:00 | Brad Sutton; Eva Corets; Jane Clayton; Judy Lew; Florian Voss | 5h | 141 |
| 70 | 6.1.14 | Status Meeting 14 | 1h | 2019-04-08 08:00 | 2019-04-08 09:00 | 33.05d | 0d | start no earlier than 2019-04-08 08:00 | Brad Sutton; Eva Corets; Jane Clayton; Judy Lew; Florian Voss | 5h | 141 |
| 71 | 6.1.15 | Status Meeting 15 | 1h | 2019-04-15 08:00 | 2019-04-15 09:00 | 28.05d | 0d | start no earlier than 2019-04-15 08:00 | Brad Sutton; Eva Corets; Jane Clayton; Judy Lew; Florian Voss | 5h | 141 |
| 72 | 6.1.16 | Status Meeting 16 | 1h | 2019-04-22 08:00 | 2019-04-22 09:00 | 23.05d | 0d | start no earlier than 2019-04-22 08:00 | Brad Sutton; Eva Corets; Jane Clayton; Judy Lew; Florian Voss | 5h | 141 |
| 73 | 6.1.17 | Status Meeting 17 | 1h | 2019-04-29 08:00 | 2019-04-29 09:00 | 18.05d | 0d | start no earlier than 2019-04-29 08:00 | Brad Sutton; Eva Corets; Jane Clayton; Judy Lew; Florian Voss | 5h | 141 |
| 74 | 6.1.18 | Status Meeting 18 | 1h | 2019-05-06 08:00 | 2019-05-06 09:00 | 13.05d | 0d | start no earlier than 2019-05-06 08:00 | Brad Sutton; Eva Corets; Jane Clayton; Judy Lew; Florian Voss | 5h | 141 |
| 75 | 6.1.19 | Status Meeting 19 | 1h | 2019-05-13 08:00 | 2019-05-13 09:00 | 8.05d | 0d | start no earlier than 2019-05-13 08:00 | Brad Sutton; Eva Corets; Jane Clayton; Judy Lew; Florian Voss | 5h | 141 |
| 76 | 6.1.20 | Status Meeting 20 | 1h | 2019-05-20 08:00 | 2019-05-20 09:00 | 3.05d | 0d | start no earlier than 2019-05-20 08:00 | Brad Sutton; Eva Corets; Jane Clayton; Judy Lew; Florian Voss | 5h | 141 |
